# SMSC Project Plan Iter2

Schedule from MS Project, 2002-03-15 to 2002-05-24, A marks actual dates.
Novosoft

## Calendars

- Standard: Mon-Fri 08:00-12:00, 13:00-17:00; Sat-Sun off. Exceptions (off unless hours are given): 2002-05-01 to 2002-05-02, 2002-05-09.

## Resources

| Resource |
| --- |
| Луговой Сергей |
| Рыжков Виктор |
| Ступник Константин |
| Чен Алексей |
| Макаров Виктор |
| Каляткин Игорь |
| Брызгалов Виталий |
| Documenter |

## Schedule

| ID | WBS | Task | Duration | Start | Finish | Predecessors | Complete | Remaining | Baseline start | Baseline finish | Baseline duration | Total slack | Free slack | Constraint | Resources | Work | Actual work |
| --- | --- | --- | --- | --- | --- | --- | --- | --- | --- | --- | --- | --- | --- | --- | --- | --- | --- |
| 1 | 1 | **2. Разработка базовой функциональности центра** | 48d | 2002-03-15 A | 2002-05-24 |  | 29% | 34.26d | 2002-03-18 | 2002-05-24 | 50d | 0d |  |  | Луговой Сергей | 2212h | 894.67h |
| 2 | 1.1 | **SMSC Core** | 46d | 2002-03-18 A | 2002-05-24 |  | 39% | 27.94d | 2002-03-18 | 2002-05-24 | 46d | 1d |  |  |  | 1174h | 469.08h |
| 3 | 1.1.1 | **Прототип SMS центра** | 24d | 2002-03-18 A | 2002-04-18 |  | 73% | 6.37d | 2002-03-18 | 2002-04-22 | 26d | 13d | 9d |  |  | 418h | 323h |
| 4 | 1.1.1.1 | **SME Manager** | 23d | 2002-03-18 A | 2002-04-17 |  | 78% | 5.11d | 2002-03-18 | 2002-04-17 | 23d | 14d |  |  |  | 163h | 123h |
| 5 | 1.1.1.1.1 | Архитектура | 6.5d | 2002-03-18 A | 2002-03-26 A |  | 100% |  | 2002-03-18 | 2002-03-21 | 4d |  |  | start no earlier than 2002-03-18 | Чен Алексей [200%]; Рыжков Виктор | 64h | 64h |
| 6 | 1.1.1.1.2 | Разработка | 6.5d | 2002-03-19 A | 2002-03-28 A | 5 | 100% |  | 2002-03-22 | 2002-03-25 | 2d |  |  |  | Чен Алексей [200%] | 51h | 51h |
| 7 | 1.1.1.1.3 | Тесткейсы | 2d | 2002-04-08 A | 2002-04-09 | 5 | 50% | 1d | 2002-04-08 | 2002-04-10 | 3d | 17d | 3d | start no earlier than 2002-04-08 | Брызгалов Виталий | 12h | 8h |
| 8 | 1.1.1.1.4 | Тестирование | 3d | 2002-04-15 | 2002-04-17 | 7, 6 |  |  | 2002-04-15 | 2002-04-17 | 3d | 14d |  | start no earlier than 2002-04-15 | Брызгалов Виталий [50%]; Чен Алексей | 36h |  |
| 9 | 1.1.1.2 | **SMPP transport support** | 18d | 2002-03-25 A | 2002-04-17 |  | 71% | 5.29d | 2002-03-25 | 2002-04-22 | 21d | 14d |  |  |  | 157h | 134h |
| 10 | 1.1.1.2.1 | Архитектура | 7.5d | 2002-03-25 A | 2002-04-03 A |  | 100% |  | 2002-03-25 | 2002-03-29 | 5d |  |  | start no earlier than 2002-03-25 | Рыжков Виктор [200%]; Ступник Константин | 97h | 97h |
| 11 | 1.1.1.2.2 | Разработка | 1.5d | 2002-04-03 A | 2002-04-04 A | 10 | 100% |  | 2002-04-01 | 2002-04-02 | 2d |  |  |  | Ступник Константин [200%] | 16h | 16h |
| 12 | 1.1.1.2.3 | Тесткейсы | 2d | 2002-04-11 | 2002-04-12 | 10 |  |  | 2002-04-11 | 2002-04-12 | 2d | 14d | 0d | finish no earlier than 2002-04-12 | Брызгалов Виталий [50%] | 8h |  |
| 13 | 1.1.1.2.4 | Тестирование | 6d | 2002-04-08 A | 2002-04-17 | 12, 11 | 50% | 3d | 2002-04-18 | 2002-04-22 | 3d | 14d |  | start no earlier than 2002-04-18 | Брызгалов Виталий [50%]; Ступник Константин | 36h | 21h |
| 14 | 1.1.1.3 | **SMSC application** | 14d | 2002-04-01 A | 2002-04-18 | 6, 11 | 64% | 5.09d | 2002-04-03 | 2002-04-18 | 12d | 13d |  |  |  | 85h | 53h |
| 15 | 1.1.1.3.1 | Архитектура | 2d | 2002-04-01 A | 2002-04-04 A |  | 100% |  | 2002-04-03 | 2002-04-04 | 2d |  |  | start no earlier than 2002-04-03 | Ступник Константин [12.5%]; Рыжков Виктор [50%] | 5h | 5h |
| 16 | 1.1.1.3.2 | Разработка | 5d | 2002-04-01 A | 2002-04-09 A | 15 | 100% |  | 2002-04-05 | 2002-04-08 | 2d |  |  | finish no earlier than 2002-04-08 | Ступник Константин; Чен Алексей | 48h | 48h |
| 17 | 1.1.1.3.3 | Тесткейсы | 2d | 2002-04-15 | 2002-04-16 | 16 |  |  | 2002-04-15 | 2002-04-16 | 2d | 13d | 0d | start no earlier than 2002-04-15 | Брызгалов Виталий [50%] | 8h |  |
| 18 | 1.1.1.3.4 | Тестирование | 2d | 2002-04-17 | 2002-04-18 | 16, 17, 19 |  |  | 2002-04-17 | 2002-04-18 | 2d | 13d |  |  | Брызгалов Виталий [50%]; Ступник Константин | 24h |  |
| 19 | 1.1.1.4 | **Dummy SME** | 2d | 2002-04-04 A | 2002-04-05 A | 16 | 100% |  | 2002-04-09 | 2002-04-11 | 3d |  |  |  |  | 13h | 13h |
| 20 | 1.1.1.4.1 | Архитектура | 2d | 2002-04-04 A | 2002-04-05 A |  | 100% |  | 2002-04-09 | 2002-04-09 | 1d |  |  | start no earlier than 2002-04-05 | Ступник Константин [12.5%]; Рыжков Виктор [50%] | 5h | 5h |
| 21 | 1.1.1.4.2 | Разработка | 1d | 2002-04-05 A | 2002-04-05 A | 20 | 100% |  | 2002-04-10 | 2002-04-11 | 2d |  |  |  | Ступник Константин | 8h | 8h |
| 22 | 1.1.2 | **Router** | 21d | 2002-03-29 A | 2002-04-26 | 6 | 56% | 9.24d | 2002-03-28 | 2002-04-26 | 22d | 7d | 3d |  | Чен Алексей | 268h | 146.08h |
| 23 | 1.1.2.1 | Архитектура | 2d | 2002-03-29 A | 2002-03-31 A |  | 100% |  | 2002-03-28 | 2002-04-02 | 4d |  |  | finish no earlier than 2002-04-02 | Чен Алексей; Рыжков Виктор [50%] | 16h | 16h |
| 24 | 1.1.2.2 | Разработка | 5.5d | 2002-04-01 A | 2002-04-11 | 23 | 91% | 0.5d | 2002-04-03 | 2002-04-09 | 5d | 9.5d | 1.5d |  | Чен Алексей | 40h | 36h |
| 25 | 1.1.2.3 | Тесткейсы | 2d | 2002-04-22 | 2002-04-23 | 23 |  |  | 2002-04-22 | 2002-04-23 | 2d | 7d | 0d | start no earlier than 2002-04-22 | Брызгалов Виталий [50%] | 8h |  |
| 26 | 1.1.2.4 | Тестирование | 3d | 2002-04-24 | 2002-04-26 | 24, 25 |  |  | 2002-04-24 | 2002-04-26 | 3d | 7d |  |  | Брызгалов Виталий [50%]; Чен Алексей | 36h |  |

| ID | WBS | Task | Type | Duration | Start | Finish | Predecessors | Complete | Remaining | Baseline start | Baseline finish | Baseline duration | Total slack | Free slack | Constraint | Resources | Work | Actual work |
| --- | --- | --- | --- | --- | --- | --- | --- | --- | --- | --- | --- | --- | --- | --- | --- | --- | --- | --- |
| 27 | 1.1.3 | **Aliasing** |  | 14d | 2002-04-11 | 2002-05-03 | 16, 6, 24 |  |  | 2002-04-12 | 2002-05-03 | 14d | 4.5d | 0.5d |  |  | 132h |  |
| 28 | 1.1.3.1 | Архитектура |  | 4d | 2002-04-11 | 2002-04-17 |  |  |  | 2002-04-12 | 2002-04-17 | 4d | 4.5d | 0d | finish no earlier than 2002-04-02 | Рыжков Виктор [50%]; Чен Алексей | 48h |  |
| 29 | 1.1.3.2 | Разработка |  | 5d | 2002-04-17 | 2002-04-24 | 28 |  |  | 2002-04-18 | 2002-04-24 | 5d | 4.5d | 0d |  | Чен Алексей | 40h |  |
| 30 | 1.1.3.3 | Тесткейсы |  | 2d | 2002-04-24 | 2002-04-26 | 28, 29 |  |  | 2002-04-25 | 2002-04-26 | 2d | 4.5d | 0d | start no earlier than 2002-04-08 | Брызгалов Виталий [50%] | 8h |  |
| 31 | 1.1.3.4 | Тестирование |  | 3d | 2002-04-26 | 2002-05-03 | 29, 30 |  |  | 2002-04-29 | 2002-05-03 | 3d | 4.5d |  |  | Брызгалов Виталий [50%]; Чен Алексей | 36h |  |
| 32 | 1.1.4 | **Шедулер (передоставщик)** |  | 9d | 2002-04-15 | 2002-04-25 | 11, 16, 21 |  |  | 2002-04-15 | 2002-04-25 | 9d | 8d | 4d |  |  | 100h |  |
| 33 | 1.1.4.1 | Архитектура |  | 2d | 2002-04-15 | 2002-04-16 |  |  |  | 2002-04-15 | 2002-04-16 | 2d | 8d | 0d | start no earlier than 2002-04-15 | Рыжков Виктор [50%]; Ступник Константин | 24h |  |
| 34 | 1.1.4.2 | Разработка |  | 4d | 2002-04-17 | 2002-04-22 | 33 |  |  | 2002-04-17 | 2002-04-22 | 4d | 8d | 0d |  | Ступник Константин | 32h |  |
| 35 | 1.1.4.3 | Тесткейсы |  | 2d | 2002-04-17 | 2002-04-18 | 33 |  |  | 2002-04-17 | 2002-04-18 | 2d | 10d | 2d |  | Брызгалов Виталий [50%] | 8h |  |
| 36 | 1.1.4.4 | Тестирование |  | 3d | 2002-04-23 | 2002-04-25 | 34, 35 |  |  | 2002-04-23 | 2002-04-25 | 3d | 8d |  |  | Брызгалов Виталий; Ступник Константин [50%] | 36h |  |
| 37 | 1.1.5 | Первый билд ядра | milestone | 0d | 2002-05-06 | 2002-05-06 | 27, 32, 22, 3 |  |  | 2002-05-06 | 2002-05-06 | 0d | 4d | 1d | start no earlier than 2002-05-06 |  |  |  |
| 38 | 1.1.6 | MAP support (research) |  | 10d | 2002-05-07 | 2002-05-21 | 37 |  |  | 2002-05-07 | 2002-05-21 | 10d | 3d |  | start no earlier than 2002-05-07 | Ступник Константин [50%]; Чен Алексей [50%]; Рыжков Виктор [50%] | 120h |  |
| 39 | 1.1.7 | **Поддержка сложных маршрутов** |  | 3d | 2002-04-24 | 2002-04-29 | 29 |  |  | 2002-04-24 | 2002-04-29 | 3d | 16.5d |  |  |  | 48h |  |
| 40 | 1.1.7.1 | Архитектура и планирование |  | 3d | 2002-04-24 | 2002-04-29 |  |  |  | 2002-04-24 | 2002-04-29 | 3d | 16.5d |  |  | Рыжков Виктор; Чен Алексей | 48h |  |
| 41 | 1.1.8 | Тесткейсы |  | 4d | 2002-05-07 | 2002-05-13 | 28, 23 |  |  | 2002-05-07 | 2002-05-13 | 4d | 3d | 0d | start no earlier than 2002-05-07 | Брызгалов Виталий [50%] | 16h |  |
| 42 | 1.1.9 | Тестирование |  | 6d | 2002-05-14 | 2002-05-21 | 37, 41 |  |  | 2002-05-14 | 2002-05-21 | 6d | 3d | 2d | start no earlier than 2002-05-06 | Брызгалов Виталий [50%]; Чен Алексей [50%]; Ступник Константин [50%] | 72h |  |
| 43 | 1.1.10 | Альфа версия ядра | milestone | 0d | 2002-05-24 | 2002-05-24 | 42 |  |  | 2002-05-24 | 2002-05-24 | 0d | 1d |  | start no earlier than 2002-05-24 |  |  |  |
| 44 | 1.2 | **Система хранения сообщений** |  | 41d | 2002-03-18 A | 2002-05-16 |  | 56% | 18.12d | 2002-03-18 | 2002-05-08 | 36d | 6d |  |  |  | 408h | 176h |
| 45 | 1.2.1 | **Status update** |  | 4d | 2002-03-18 A | 2002-03-21 A |  | 100% |  | 2002-03-18 | 2002-03-20 | 3d |  |  |  |  | 36h | 36h |
| 46 | 1.2.1.1 | Архитектура |  | 1.12d | 2002-03-18 A | 2002-03-19 A |  | 100% |  | 2002-03-18 | 2002-03-18 | 1d |  |  |  | Макаров Виктор [300%] | 10h | 10h |
| 47 | 1.2.1.2 | Разработка |  | 2d | 2002-03-19 A | 2002-03-21 A | 46 | 100% |  | 2002-03-19 | 2002-03-19 | 1d |  |  |  | Макаров Виктор [75%] | 12h | 12h |
| 48 | 1.2.1.3 | Тесткейсы |  | 0.88d | 2002-03-19 A | 2002-03-19 A | 46 | 100% |  | 2002-03-19 | 2002-03-19 | 0.5d |  |  |  | Брызгалов Виталий | 7h | 7h |
| 49 | 1.2.1.4 | Тестирование |  | 1d | 2002-03-20 A | 2002-03-20 A | 48, 47 | 100% |  | 2002-03-20 | 2002-03-20 | 1d |  |  |  | Брызгалов Виталий [87.5%]; Макаров Виктор | 7h | 7h |
| 50 | 1.2.2 | **Архиватор** |  | 12d | 2002-03-19 A | 2002-04-03 A | 45 | 100% |  | 2002-03-21 | 2002-04-02 | 9d |  |  |  |  | 78.5h | 78.5h |
| 51 | 1.2.2.1 | Архитектура |  | 3d | 2002-03-19 A | 2002-03-25 A |  | 100% |  | 2002-03-21 | 2002-03-25 | 3d |  |  |  | Макаров Виктор; Рыжков Виктор [50%]; Брызгалов Виталий [50%] | 23.5h | 23.5h |
| 52 | 1.2.2.2 | Разработка |  | 2d | 2002-03-28 A | 2002-03-29 A | 51 | 100% |  | 2002-03-26 | 2002-03-28 | 3d |  |  |  | Макаров Виктор | 16h | 16h |
| 53 | 1.2.2.3 | Тесткейсы |  | 1d | 2002-03-29 A | 2002-03-29 A | 51 | 100% |  | 2002-03-27 | 2002-03-27 | 1d |  |  | start no earlier than 2002-03-27 | Брызгалов Виталий [50%] | 4h | 4h |
| 54 | 1.2.2.4 | Тестирование |  | 5d | 2002-03-29 A | 2002-04-03 A | 53, 52 | 100% |  | 2002-03-29 | 2002-04-02 | 3d |  |  |  | Макаров Виктор; Брызгалов Виталий [50%] | 35h | 35h |

| ID | WBS | Task | Duration | Start | Finish | Predecessors | Complete | Remaining | Baseline start | Baseline finish | Baseline duration | Total slack | Free slack | Constraint | Resources | Work | Actual work |
| --- | --- | --- | --- | --- | --- | --- | --- | --- | --- | --- | --- | --- | --- | --- | --- | --- | --- |
| 55 | 1.2.3 | **Доработка системы хранения** | 9d | 2002-04-03 A | 2002-04-15 | 50 | 73% | 2.45d | 2002-04-04 | 2002-04-18 | 11d | 11d | 4d |  |  | 97.5h | 61.5h |
| 56 | 1.2.3.1 | Архитектура | 3d | 2002-04-03 A | 2002-04-05 A |  | 100% |  | 2002-04-04 | 2002-04-09 | 4d |  |  | start no earlier than 2002-04-04 | Рыжков Виктор [62.5%]; Брызгалов Виталий [62.5%]; Макаров Виктор [56.2%] | 25.5h | 25.5h |
| 57 | 1.2.3.2 | Разработка | 3d | 2002-04-05 A | 2002-04-09 A | 56 | 100% |  | 2002-04-10 | 2002-04-15 | 4d |  |  |  | Макаров Виктор [112.5%] | 20h | 20h |
| 58 | 1.2.3.3 | Тесткейсы | 2d | 2002-04-09 A | 2002-04-10 A | 56 | 100% |  | 2002-04-10 | 2002-04-11 | 2d |  |  |  | Брызгалов Виталий | 16h | 16h |
| 59 | 1.2.3.4 | Тестирование | 3d | 2002-04-11 | 2002-04-15 | 57, 58 |  |  | 2002-04-16 | 2002-04-18 | 3d | 11d |  |  | Брызгалов Виталий [50%]; Макаров Виктор | 36h |  |
| 60 | 1.2.4 | **Запросы для шедулера** | 7d | 2002-04-22 | 2002-04-30 | 55, 33 |  |  | 2002-04-22 | 2002-04-30 | 7d | 7d | 1d |  |  | 88h |  |
| 61 | 1.2.4.1 | Архитектура | 2d | 2002-04-22 | 2002-04-23 |  |  |  | 2002-04-22 | 2002-04-23 | 2d | 7d | 0d | start no earlier than 2002-04-22 | Брызгалов Виталий [50%]; Рыжков Виктор [25%]; Макаров Виктор | 28h |  |
| 62 | 1.2.4.2 | Разработка | 2d | 2002-04-24 | 2002-04-25 | 61 |  |  | 2002-04-24 | 2002-04-25 | 2d | 7d | 0d |  | Макаров Виктор | 16h |  |
| 63 | 1.2.4.3 | Тесткейсы | 1d | 2002-04-24 | 2002-04-24 | 61 |  |  | 2002-04-24 | 2002-04-24 | 1d | 8d | 1d |  | Брызгалов Виталий | 8h |  |
| 64 | 1.2.4.4 | Тестирование | 3d | 2002-04-26 | 2002-04-30 | 62, 63 |  |  | 2002-04-26 | 2002-04-30 | 3d | 7d |  |  | Макаров Виктор; Брызгалов Виталий [50%] | 36h |  |
| 65 | 1.2.5 | Оптимизация индексов таблиц | 3d | 2002-05-06 | 2002-05-08 | 60 |  |  | 2002-05-06 | 2002-05-08 | 3d | 6d | 0d | start no earlier than 2002-05-06 | Макаров Виктор; Брызгалов Виталий | 48h |  |
| 66 | 1.2.6 | Performance and stress testing | 5d | 2002-05-10 | 2002-05-16 | 65 |  |  | 2002-05-10 | 2002-05-16 | 5d | 6d |  | start no earlier than 2002-05-10 | Брызгалов Виталий [50%]; Макаров Виктор | 60h |  |
| 67 | 1.3 | **Интерфейс администратора** | 26d | 2002-03-15 A | 2002-04-19 |  | 83% | 4.33d |  |  |  | 22d |  |  |  | 218h | 142h |
| 68 | 1.3.1 | Разработка прототипа веб приложения | 10d | 2002-03-21 A | 2002-04-11 A |  | 100% |  | 2002-03-18 | 2002-03-29 | 10d |  |  | start no earlier than 2002-03-18 | Каляткин Игорь | 50h | 50h |
| 69 | 1.3.2 | Daemon management | 15d | 2002-03-15 A | 2002-04-11 A |  | 100% |  | 2002-03-18 | 2002-03-29 | 10d |  |  | start no earlier than 2002-03-18 | Каляткин Игорь | 92h | 92h |
| 70 | 1.3.3 | Доработка архитектура системы администрирования | 5d | 2002-04-15 | 2002-04-19 | 69, 68 |  |  | 2002-04-15 | 2002-04-19 | 5d | 22d |  | finish no earlier than 2002-04-19 | Каляткин Игорь; Рыжков Виктор [50%]; Чен Алексей [20%]; Ступник Константин [20%] | 76h |  |
| 71 | 1.4 | **Разное** | 47d | 2002-03-18 | 2002-05-24 |  |  |  |  |  |  | 0d |  |  |  | 36h |  |
| 72 | 1.4.1 | Поддержка среды разработки | 45d | 2002-03-18 | 2002-05-22 |  |  |  | 2002-03-18 | 2002-05-22 | 45d | 2d |  | start no earlier than 2002-03-18 | Ступник Константин [5%]; Чен Алексей [5%] | 36h |  |
| 73 | 1.4.2 | Собрания | 47d | 2002-03-18 | 2002-05-24 |  |  |  | 2002-03-18 | 2002-05-24 | 47d | 0d |  | finish no earlier than 2002-05-24 |  |  |  |
| 74 | 1.4.3 | Консультации | 47d | 2002-03-18 | 2002-05-24 |  |  |  | 2002-03-18 | 2002-05-24 | 47d | 0d |  | start no earlier than 2002-03-18 |  |  |  |
